# GestioneTurniPersonale

How a schedule from MS Project changed from version to version. A marks actual dates.

## Version 1 (saved 2022-01-27)

| ID | WBS | Task | Duration | Start | Finish | Predecessors | Total float | Constraint |
| --- | --- | --- | --- | --- | --- | --- | --- | --- |
| 1 | 1 | **Gestione Turni Personale** | 10.12d | 2022-01-27 09:05 | 2022-05-05 12:05 |  | 0d |  |
| 2 | 1.1 | **Analisi** | 0.69d | 2022-01-27 09:05 | 2022-01-27 15:30 |  | 0d |  |
| 3 |  | Domande al mandante | 0.5h | 2022-01-27 09:05 | 2022-01-27 09:35 |  | 0d |  |
| 4 |  | Pianificazione Gantt | 3h | 2022-01-27 09:35 | 2022-01-27 13:30 | 3 | 0d |  |
| 5 |  | Requisiti | 1h | 2022-01-27 13:30 | 2022-01-27 14:30 | 4 | 0d |  |
| 6 |  | Test case | 1h | 2022-01-27 14:30 | 2022-01-27 15:30 | 5 | 0d |  |
| 7 |  | Use case | 1h | 2022-01-27 14:30 | 2022-01-27 15:30 | 5 | 0d |  |
| 8 |  | Abstract | 1h | 2022-01-27 14:30 | 2022-01-27 15:30 | 5 | 0d |  |
| 9 |  | Termine analisi | 0d | 2022-01-27 15:30 | 2022-01-27 15:30 | 2 | 0d |  |
| 10 | 1.3 | **Progettazione** | 1d | 2022-01-27 15:30 | 2022-02-10 09:35 |  | 0d |  |
| 11 |  | Design del database | 4h | 2022-01-27 15:30 | 2022-02-03 12:05 | 9 | 0d |  |
| 12 |  | Design delle pagine web | 4h | 2022-02-03 12:05 | 2022-02-10 09:35 | 11 | 0d |  |
| 13 |  | Termine progettazione | 0d | 2022-02-10 09:35 | 2022-02-10 09:35 | 10 | 0d |  |
| 14 | 1.5 | **Implementazione** | 7.94d | 2022-02-10 09:35 | 2022-04-28 15:30 |  | 0d |  |
| 15 |  | Configurazione ambiente | 2h | 2022-02-10 09:35 | 2022-02-10 11:35 | 13 | 0d |  |
| 16 |  | Creazione database | 0.5h | 2022-02-10 11:35 | 2022-02-10 12:05 | 15 | 0d |  |
| 17 | 1.5.3 | **Applicativo web** | 7.62d | 2022-02-10 12:05 | 2022-04-28 15:30 |  | 0d |  |
| 18 |  | Pagina login | 2h | 2022-02-10 12:05 | 2022-02-10 15:00 | 16 | 7d |  |
| 19 |  | Pagine gestione datori | 8h | 2022-02-10 12:05 | 2022-02-17 14:30 | 16 | 0d |  |
| 20 |  | Pagine gestione negozi | 8h | 2022-02-17 14:30 | 2022-02-24 16:00 | 19 | 0d |  |
| 21 |  | Pagine gestione dipendenti | 8h | 2022-02-24 16:00 | 2022-03-17 10:05 | 20 | 0d |  |
| 22 |  | Pagina gestione orario negozio | 15h | 2022-03-17 10:05 | 2022-03-31 12:05 | 21 | 0d |  |
| 23 |  | Panoramica dipendenti | 12h | 2022-03-31 12:05 | 2022-04-14 11:05 | 22 | 0.25d |  |
| 24 |  | Home | 8h | 2022-03-31 12:05 | 2022-04-07 14:30 | 22 | 0d |  |
| 25 |  | Invio email | 6h | 2022-04-07 14:30 | 2022-04-14 14:00 | 24 | 0d |  |
| 26 |  | Pagina statistiche | 8h | 2022-04-14 14:00 | 2022-04-28 15:30 | 25, 23 | 0d |  |
| 27 | 1.6 | **Test** | 0.5d | 2022-04-28 15:30 | 2022-05-05 12:05 |  | 0d |  |
| 28 |  | Controllo gestione negozi | 2h | 2022-04-28 15:30 | 2022-05-05 10:05 | 14 | 0d |  |
| 29 |  | Controllo utenti | 1h | 2022-04-28 15:30 | 2022-04-28 16:30 | 14 | 0.12d |  |
| 30 |  | Controllo gestione dipendenti | 2h | 2022-04-28 15:30 | 2022-05-05 10:05 | 14 | 0d |  |
| 31 |  | Controllo gestione orari | 1h | 2022-05-05 10:05 | 2022-05-05 11:05 | 28, 29, 30 | 0.12d |  |
| 32 |  | Controllo statistiche | 2h | 2022-05-05 10:05 | 2022-05-05 12:05 | 28, 29, 30 | 0d |  |
| 33 |  | Controllo invio email | 1h | 2022-05-05 10:05 | 2022-05-05 11:05 | 28, 29, 30 | 0.12d |  |
| 34 |  | Documentazione | 23.4h | 2022-02-10 09:41 | 2022-05-05 09:00 | 35FF | 0.3d |  |
| 35 |  | Consegna del progetto | 0d | 2022-05-05 09:00 | 2022-05-05 09:00 |  | 0.3d | start no earlier than 2022-05-05 09:00 |

## Version 2 (saved 2022-03-31)

Note of the change: Commenti + log

Last finish stays 2022-05-05.

Changed:

| ID | Task | Finish | Duration | Total float | Other |
| --- | --- | --- | --- | --- | --- |
| 1 | **Gestione Turni Personale** | 2022-05-05 12:05 → 2022-05-05 18:00 | 10.12d → 10.75d | 0d → none | baseline start none → 2022-01-27 09:05; baseline finish none → 2022-05-05 18:00 |
| 2 | **Analisi** |  |  | 0d → 0.44d | baseline start none → 2022-01-27 09:05; baseline finish none → 2022-01-27 15:30 |
| 3 | Domande al mandante |  |  | 0d → 0.44d | baseline start none → 2022-01-27 09:05; baseline finish none → 2022-01-27 09:35 |
| 4 | Pianificazione Gantt |  |  | 0d → 0.44d | baseline start none → 2022-01-27 09:35; baseline finish none → 2022-01-27 13:30 |
| 5 | Requisiti |  |  | 0d → 0.44d | baseline start none → 2022-01-27 13:30; baseline finish none → 2022-01-27 14:30 |
| 6 | Test case |  |  | 0d → 0.44d | baseline start none → 2022-01-27 14:30; baseline finish none → 2022-01-27 15:30 |
| 7 | Use case |  |  | 0d → 0.44d | baseline start none → 2022-01-27 14:30; baseline finish none → 2022-01-27 15:30 |
| 8 | Abstract |  |  | 0d → 0.44d | baseline start none → 2022-01-27 14:30; baseline finish none → 2022-01-27 15:30 |
| 9 | Termine analisi |  |  | 0d → 0.44d | baseline start none → 2022-01-27 15:30; baseline finish none → 2022-01-27 15:30 |
| 10 | **Progettazione** |  |  | 0d → 0.44d | baseline start none → 2022-01-27 15:30; baseline finish none → 2022-02-10 09:35 |
| 11 | Design del database |  |  | 0d → 0.44d | baseline start none → 2022-01-27 15:30; baseline finish none → 2022-02-03 12:05 |
| 12 | Design delle pagine web |  |  | 0d → 0.44d | baseline start none → 2022-02-03 12:05; baseline finish none → 2022-02-10 09:35 |
| 13 | Termine progettazione |  |  | 0d → 0.44d | baseline start none → 2022-02-10 09:35; baseline finish none → 2022-02-10 09:35 |
| 14 | **Implementazione** |  |  | 0d → 0.44d | baseline start none → 2022-02-10 09:35; baseline finish none → 2022-04-28 15:30 |
| 15 | Configurazione ambiente |  |  | 0d → 0.44d | baseline start none → 2022-02-10 09:35; baseline finish none → 2022-02-10 11:35 |
| 16 | Creazione database |  |  | 0d → 0.44d | baseline start none → 2022-02-10 11:35; baseline finish none → 2022-02-10 12:05 |
| 17 | **Applicativo web** |  |  | 0d → 0.44d | baseline start none → 2022-02-10 12:05; baseline finish none → 2022-04-28 15:30 |
| 18 | Pagina login |  |  | 7d → 7.81d | baseline start none → 2022-02-10 12:05; baseline finish none → 2022-02-10 15:00 |
| 19 | Pagine gestione datori |  |  | 0d → 0.44d | baseline start none → 2022-02-10 12:05; baseline finish none → 2022-02-17 14:30 |
| 20 | Pagine gestione negozi |  |  | 0d → 0.44d | baseline start none → 2022-02-17 14:30; baseline finish none → 2022-02-17 18:00 |
| 21 | Pagine gestione dipendenti |  |  | 0d → 0.44d | baseline start none → 2022-02-24 16:00; baseline finish none → 2022-02-24 18:00 |
| 22 | Pagina gestione orario negozio |  |  | 0d → 0.44d | baseline start none → 2022-03-17 10:05; baseline finish none → 2022-03-31 12:05 |
| 23 | Panoramica dipendenti |  |  | 0.25d → 0.69d | baseline start none → 2022-03-31 12:05; baseline finish none → 2022-04-14 11:05 |
| 24 | Home |  |  | 0d → 0.44d | baseline start none → 2022-03-31 12:05; baseline finish none → 2022-04-07 14:30 |
| 25 | Invio email |  |  | 0d → 0.44d | baseline start none → 2022-04-07 14:30; baseline finish none → 2022-03-24 18:00 |
| 26 | Pagina statistiche |  |  | 0d → 0.44d | baseline start none → 2022-04-14 14:00; baseline finish none → 2022-04-28 15:30 |
| 27 | **Test** |  |  | 0d → 0.44d | baseline start none → 2022-04-28 15:30; baseline finish none → 2022-05-05 12:05 |
| 28 | Controllo gestione negozi |  |  | 0d → 0.44d | baseline start none → 2022-04-28 15:30; baseline finish none → 2022-05-05 10:05 |
| 29 | Controllo utenti |  |  | 0.12d → 0.56d | baseline start none → 2022-04-28 15:30; baseline finish none → 2022-04-28 16:30 |
| 30 | Controllo gestione dipendenti |  |  | 0d → 0.44d | baseline start none → 2022-04-28 15:30; baseline finish none → 2022-05-05 10:05 |
| 31 | Controllo gestione orari |  |  | 0.12d → 0.56d | baseline start none → 2022-05-05 10:05; baseline finish none → 2022-05-05 11:05 |
| 32 | Controllo statistiche |  |  | 0d → 0.44d | baseline start none → 2022-05-05 10:05; baseline finish none → 2022-05-05 12:05 |
| 33 | Controllo invio email |  |  | 0.12d → 0.56d | baseline start none → 2022-05-05 10:05; baseline finish none → 2022-05-05 11:05 |
| 34 | Documentazione |  |  |  | baseline start none → 2022-02-10 09:41; baseline finish none → 2022-05-05 09:00 |
| 35 | Consegna del progetto |  |  |  | baseline start none → 2022-05-05 09:00; baseline finish none → 2022-05-05 09:00 |

## Version 3 (saved 2022-05-05)

Last finish stays 2022-05-05.

Changed:

| ID | Task | Start | Finish | Duration | Total float | Other |
| --- | --- | --- | --- | --- | --- | --- |
| 14 | **Implementazione** |  | 2022-04-28 15:30 → 2022-04-14 12:05 (-14d) | 7.94d → 6.81d | 0.44d → 1.56d |  |
| 17 | **Applicativo web** |  | 2022-04-28 15:30 → 2022-04-14 12:05 (-14d) | 7.62d → 6.5d | 0.44d → 1.56d |  |
| 19 | Pagine gestione datori |  | 2022-02-17 14:30 → 2022-02-17 09:35 | 8h → 4h | 0.44d → 1.56d | constraint none → finish no earlier than 2022-02-10 18:00 |
| 20 | Pagine gestione negozi | 2022-02-17 14:30 → 2022-02-17 09:35 | 2022-02-24 16:00 → 2022-02-17 14:30 (-7d) | 8h → 4h | 0.44d → 1.56d | baseline finish 2022-02-17 18:00 → 2022-02-24 16:00 |
| 21 | Pagine gestione dipendenti | 2022-02-24 16:00 → 2022-02-17 14:30 (-7d) | 2022-03-17 10:05 → 2022-02-24 11:05 (-21d) | 8h → 4h | 0.44d → 1.56d | baseline finish 2022-02-24 18:00 → 2022-03-17 10:05 |
| 22 | Pagina gestione orario negozio | 2022-03-17 10:05 → 2022-02-24 11:05 (-21d) | 2022-03-31 12:05 → 2022-03-24 11:35 (-7d) | 15h → 20h | 0.44d → 1.56d |  |
| 23 | Panoramica dipendenti | 2022-03-31 12:05 → 2022-03-24 11:35 (-7d) | 2022-04-14 11:05 → 2022-03-31 14:00 (-14d) | 12h → 8h | 0.69d → 2.31d |  |
| 24 | Home | 2022-03-31 12:05 → 2022-03-24 11:35 (-7d) | 2022-04-07 14:30 → 2022-03-31 14:00 (-7d) |  | 0.44d → 1.56d |  |
| 25 | Invio email | 2022-04-07 14:30 → 2022-03-31 14:00 (-7d) | 2022-04-14 14:00 → 2022-04-07 13:30 (-7d) |  | 0.44d → 1.56d | baseline finish 2022-03-24 18:00 → 2022-04-14 14:00 |
| 26 | Pagina statistiche | 2022-04-14 14:00 → 2022-04-07 13:30 (-7d) | 2022-04-28 15:30 → 2022-04-14 12:05 (-14d) | 8h → 6h | 0.44d → 1.56d |  |
| 27 | **Test** | 2022-04-28 15:30 → 2022-04-14 12:05 (-14d) | 2022-05-05 12:05 → 2022-04-28 09:35 (-7d) |  | 0.44d → 1.56d |  |
| 28 | Controllo gestione negozi | 2022-04-28 15:30 → 2022-04-14 12:05 (-14d) | 2022-05-05 10:05 → 2022-04-14 15:00 (-21d) |  | 0.44d → 1.56d |  |
| 29 | Controllo utenti | 2022-04-28 15:30 → 2022-04-14 12:05 (-14d) | 2022-04-28 16:30 → 2022-04-14 14:00 (-14d) |  | 0.56d → 1.69d |  |
| 30 | Controllo gestione dipendenti | 2022-04-28 15:30 → 2022-04-14 12:05 (-14d) | 2022-05-05 10:05 → 2022-04-14 15:00 (-21d) |  | 0.44d → 1.56d |  |
| 31 | Controllo gestione orari | 2022-05-05 10:05 → 2022-04-14 15:00 (-21d) | 2022-05-05 11:05 → 2022-04-14 16:00 (-21d) |  | 0.56d → 1.69d |  |
| 32 | Controllo statistiche | 2022-05-05 10:05 → 2022-04-14 15:00 (-21d) | 2022-05-05 12:05 → 2022-04-28 09:35 (-7d) |  | 0.44d → 1.56d |  |
| 33 | Controllo invio email | 2022-05-05 10:05 → 2022-04-14 15:00 (-21d) | 2022-05-05 11:05 → 2022-04-14 16:00 (-21d) |  | 0.56d → 1.69d |  |
